# Assets Project

Schedule from MS Project, 2024-05-20 to 2024-07-19, costs in R$.

## Calendars

- Padrão: Mon-Fri 09:00-12:00, 13:00-18:00; Sat-Sun off.

## Resources

| Resource | Rate |
| --- | --- |
| Requirement Analyst | 20 |
| System Analyst | 20 |
| Software Architect | 25 |
| FlowChart Designer | 20 |
| LucidChart S-License | 40 |
| Computer | 600 |
| UI Designer | 15 |
| Front-end Developer | 20 |
| Back-end Developer | 21 |
| IDE Software (Visual Studio Code) |  |
| Full-stack Developer | 25 |
| SQL Data Modeler | 24 |
| SQL Server 2022 Standard Edition License | 500 |
| VSC (Git Software) |  |
| Ms. Teams |  |
| Ms. Office 365 |  |
| Database Administrator | 24 |
| SQL Developer | 24 |
| Database Mgmnt Software |  |
| Data Migration Specialist | 17 |
| Testest Engineer | 27 |
| Testing Tools |  |
| Test Environment Configuration |  |
| Technical Write | 10 |
| GitBook Software License | 82.5 |
| Change Management Specialist | 15 |
| Change Management Tools | 50 |
| Customer Engagement Specialist | 10 |
| Presentation Tools (Canva) |  |
| Figma | 48 |

## Schedule

| ID | WBS | Task | Duration | Start | Finish | Predecessors | Total slack | Resources | Work | Cost |
| --- | --- | --- | --- | --- | --- | --- | --- | --- | --- | --- |
| 1 | 1 | **ASSETS MANAGEMENT** | 45d | 2024-05-20 | 2024-07-19 |  | 0d |  | 2360h | 73,499 |
| 2 | 1.1 | **Requirements Phase** | 20d | 2024-05-20 | 2024-06-14 |  | 0d |  | 408h | 15,050 |
| 3 | 1.1.1 | **Analysis Customer needs** | 5d | 2024-05-20 | 2024-05-24 |  | 0d |  | 64h | 3,120 |
| 4 | 1.1.1.1 | Conduct the first interview with customer | 1d | 2024-05-20 | 2024-05-20 |  | 0d | Requirement Analyst; Computer; Ms. Teams | 8h | 760 |
| 5 | 1.1.1.2 | Define project scope | 1d | 2024-05-20 | 2024-05-20 |  | 4d | Requirement Analyst | 8h | 160 |
| 6 | 1.1.1.3 | Create Low Fidelity Sketch | 1d | 2024-05-20 | 2024-05-20 |  | 4d | Requirement Analyst; Computer; FlowChart Designer; LucidChart S-License | 16h | 960 |
| 7 | 1.1.1.4 | Requirements analysis | 4d | 2024-05-21 | 2024-05-24 | 4 | 0d | Requirement Analyst; Computer; Ms. Office 365 | 32h | 1,240 |
| 8 | 1.1.2 | **Requirements documentation** | 7d | 2024-05-27 | 2024-06-04 | 3 | 0d |  | 168h | 5,800 |
| 9 | 1.1.2.1 | Document Functional Requirements | 3d | 2024-05-27 | 2024-05-29 |  | 4d | Requirement Analyst; Computer; Ms. Teams | 24h | 1,080 |
| 10 | 1.1.2.2 | Document Non-Functional Requirements | 3d | 2024-05-27 | 2024-05-29 |  | 4d | Requirement Analyst; Computer; Ms. Office 365 | 24h | 1,080 |
| 11 | 1.1.2.3 | Identify project risks | 1d | 2024-05-27 | 2024-05-27 |  | 6d | Requirement Analyst; Computer | 8h | 760 |
| 12 | 1.1.2.4 | Create Use case stories | 7d | 2024-05-27 | 2024-06-04 |  | 0d | Requirement Analyst; Computer; FlowChart Designer; LucidChart S-License | 112h | 2,880 |
| 13 | 1.1.3 | **Requirements Validation** | 4d | 2024-06-05 | 2024-06-10 | 8 | 0d |  | 48h | 2,770 |
| 14 | 1.1.3.1 | Conduct the second interview with customers | 1d | 2024-06-05 | 2024-06-05 |  | 3d | Computer; Ms. Office 365; Ms. Teams; Requirement Analyst | 8h | 760 |
| 15 | 1.1.3.2 | Document change requests | 1d | 2024-06-05 | 2024-06-05 |  | 0d | Computer; Requirement Analyst; Change Management Specialist; Change Management Tools | 16h | 930 |
| 16 | 1.1.3.3 | Modify required documents | 3d | 2024-06-06 | 2024-06-10 | 15 | 0d | Computer; Requirement Analyst | 24h | 1,080 |
| 17 | 1.1.4 | Preparation of application diagrams and models (Architecture, flowchart, ER) | 4d | 2024-06-11 | 2024-06-14 | 13 | 0d | Computer; FlowChart Designer; LucidChart S-License; Ms. Teams; Requirement Analyst; Software Architect; System Analyst | 128h | 3,360 |
| 18 | 1.2 | **System Design** | 5d | 2024-06-17 | 2024-06-21 | 2 | 0d |  | 80h | 2,176 |
| 19 | 1.2.1 | Create a Figma Mockup | 3d | 2024-06-17 | 2024-06-19 |  | 0d | UI Designer; Figma | 24h | 408 |
| 20 | 1.2.2 | Create a detailed palette document | 1d | 2024-06-17 | 2024-06-17 |  | 4d | Figma; UI Designer; Ms. Office 365 | 8h | 168 |
| 21 | 1.2.3 | Usability and system interaction | 2d | 2024-06-20 | 2024-06-21 | 19 | 0d | Figma; UI Designer | 16h | 288 |
| 22 | 1.2.4 | Usability testing | 1d | 2024-06-17 | 2024-06-17 |  | 4d | Computer; Figma; Requirement Analyst; Testest Engineer; UI Designer | 24h | 1,144 |
| 23 | 1.2.5 | Adjustments based on feedback received | 1d | 2024-06-17 | 2024-06-17 |  | 4d | Figma; UI Designer | 8h | 168 |
| 24 | 1.3 | **Software Development** | 14d | 2024-06-24 | 2024-07-11 | 18 | 0d |  | 1736h | 51,588 |
| 25 | 1.3.1 | **Frontend development** | 10d | 2024-06-24 | 2024-07-05 |  | 4d |  | 928h | 28,952 |
| 26 | 1.3.1.1 | **User Management** | 4d | 2024-06-24 | 2024-06-27 |  | 10d |  | 208h | 6,392 |
| 27 | 1.3.1.1.1 | User Registration Screen | 4d | 2024-06-24 | 2024-06-27 |  | 10d | Computer; Front-end Developer; Full-stack Developer; IDE Software (Visual Studio Code); System Analyst; VSC (Git Software) | 96h | 2,680 |
| 28 | 1.3.1.1.2 | User Profile Screen | 4d | 2024-06-24 | 2024-06-27 |  | 10d | Computer; Front-end Developer; Full-stack Developer; IDE Software (Visual Studio Code); System Analyst; VSC (Git Software) | 96h | 2,680 |
| 29 | 1.3.1.1.3 | User Management Testing | 2d | 2024-06-24 | 2024-06-25 |  | 12d | Computer; Testest Engineer; Testing Tools | 16h | 1,032 |

Notes:
- 4: Notes - Erase After: Ato de marcar a reuniao e ir até o cliente
- 6: Notes - Erase After: Só para organizar as ideias e depois analizar com calma
- 7: Notes - Erase After: Essa parte demora mais tempo pq precisa analisar todas as vertentes de cada necessidade e analisar as complexidades do problema
- 9: Notes - Erase After: Acontecem em paralelo pela mesma pessoa (Eng de req)
- 10: Notes - Erase After: Acontecem em paralelo pela mesma pessoa (Eng de req)
- 11: Notes - Erase After: Acontecem em paralelo pela mesma pessoa (Eng de req)
- 12: Notes - Erase After: Os use cases sob a ótica do professor consiste na documentação completinha de cada fluxo, entao não é apenas boneco de palito. É descrição escrita das coisas
- 15: Notes - Erase After: Documentar as mudanças para ter uma garantia no futuro
- 16: Notes - Erase After: Fazer as mudanças que o cliente pediu nas etapas anteriores
- 19: Notes - Erase After: UI Design
- 20: Notes - Erase After: UI Design
- 21: Notes - Erase After: UX Design
- 22: Notes - Erase After: Tester needs to write a feedback with posssible changes
- 23: Notes - Erase After: UI or UX

| ID | WBS | Task | Duration | Start | Finish | Predecessors | Total slack | Free slack | Resources | Work | Cost |
| --- | --- | --- | --- | --- | --- | --- | --- | --- | --- | --- | --- |
| 30 | 1.3.1.2 | **Sector Management** | 4d | 2024-06-24 | 2024-06-27 |  | 10d |  |  | 48h | 2,272 |
| 31 | 1.3.1.2.1 | Sector Screen Development | 4d | 2024-06-24 | 2024-06-27 |  | 10d |  | Computer; Front-end Developer; IDE Software (Visual Studio Code); VSC (Git Software) | 32h | 1,240 |
| 32 | 1.3.1.2.2 | Sector Management Testing | 2d | 2024-06-24 | 2024-06-25 |  | 12d |  | Computer; Testest Engineer; Testing Tools | 16h | 1,032 |
| 33 | 1.3.1.3 | **Category and Space Management** | 4d | 2024-06-24 | 2024-06-27 |  | 10d |  |  | 48h | 2,272 |
| 34 | 1.3.1.3.1 | Category and Space Screen Development | 4d | 2024-06-24 | 2024-06-27 |  | 10d |  | Computer; Front-end Developer; IDE Software (Visual Studio Code); VSC (Git Software) | 32h | 1,240 |
| 35 | 1.3.1.3.2 | Category and Space Testing | 2d | 2024-06-24 | 2024-06-25 |  | 12d |  | Computer; Testest Engineer; Testing Tools | 16h | 1,032 |
| 36 | 1.3.1.4 | **Asset Management** | 10d | 2024-06-24 | 2024-07-05 |  | 4d |  |  | 272h | 8,272 |
| 37 | 1.3.1.4.1 | Asset Management Development | 10d | 2024-06-24 | 2024-07-05 |  | 4d |  | Computer; Front-end Developer; IDE Software (Visual Studio Code); System Analyst; VSC (Git Software) | 160h | 3,800 |
| 38 | 1.3.1.4.2 | Asset Viewing and Updating Development | 4d | 2024-06-24 | 2024-06-27 |  | 10d |  | Computer; Full-stack Developer; IDE Software (Visual Studio Code); VSC (Git Software) | 32h | 1,400 |
| 39 | 1.3.1.4.3 | Asset Filtering and Deletion Development | 4d | 2024-06-24 | 2024-06-27 |  | 10d |  | Computer; Front-end Developer; Full-stack Developer; IDE Software (Visual Studio Code); VSC (Git Software) | 64h | 2,040 |
| 40 | 1.3.1.4.4 | Asset Management Testing | 2d | 2024-06-24 | 2024-06-25 |  | 12d |  | Computer; Testest Engineer; Testing Tools | 16h | 1,032 |
| 41 | 1.3.1.5 | **Admin-specific Pages** | 10d | 2024-06-24 | 2024-07-05 |  | 4d |  |  | 272h | 7,112 |
| 42 | 1.3.1.5.1 | **Admin Pages Development** | 10d | 2024-06-24 | 2024-07-05 |  | 4d |  |  | 256h | 6,080 |
| 43 | 1.3.1.5.1.1 | Editing screens | 10d | 2024-06-24 | 2024-07-05 |  | 4d |  | Computer; Front-end Developer; IDE Software (Visual Studio Code); System Analyst; VSC (Git Software) | 160h | 3,800 |
| 44 | 1.3.1.5.1.2 | Overview Screens | 6d | 2024-06-24 | 2024-07-01 |  | 8d |  | Computer; Front-end Developer; IDE Software (Visual Studio Code); UI Designer | 96h | 2,280 |
| 45 | 1.3.1.5.2 | Admin-specific Testing | 2d | 2024-06-24 | 2024-06-25 |  | 12d |  | Computer; Testest Engineer; Testing Tools | 16h | 1,032 |
| 46 | 1.3.1.6 | **Loans and Final Testing** | 8d | 2024-06-24 | 2024-07-03 |  | 6d |  |  | 80h | 2,632 |
| 47 | 1.3.1.6.1 | Loan Management Development | 8d | 2024-06-24 | 2024-07-03 |  | 6d |  | Computer; Full-stack Developer; IDE Software (Visual Studio Code); VSC (Git Software) | 64h | 2,200 |
| 48 | 1.3.1.6.2 | Final Testing | 2d | 2024-06-24 | 2024-06-25 |  | 12d |  | Testest Engineer; Testing Tools | 16h | 432 |
| 49 | 1.3.2 | **Backend development** | 14d | 2024-06-24 | 2024-07-11 |  | 0d |  |  | 808h | 22,636 |
| 50 | 1.3.2.1 | Develop API´s | 14d | 2024-06-24 | 2024-07-11 |  | 0d |  | Back-end Developer; Computer; Full-stack Developer; IDE Software (Visual Studio Code); VSC (Git Software) | 224h | 5,752 |
| 51 | 1.3.2.2 | Unitary Tests | 14d | 2024-06-24 | 2024-07-11 |  | 0d |  | Test Environment Configuration; Testest Engineer; Testing Tools | 112h | 3,024 |
| 52 | 1.3.2.3 | **Data Migration and Integration Phase** | 5d | 2024-06-24 | 2024-06-28 |  | 4d | 0d |  | 352h | 10,660 |
| 53 | 1.3.2.3.1 | Contact the IPB technician to learn about the current database | 1d | 2024-06-24 | 2024-06-24 |  | 3d |  | Computer; Data Migration Specialist; Ms. Teams; Software Architect | 16h | 936 |
| 54 | 1.3.2.3.2 | Migration and Data Integration Planning | 2d | 2024-06-24 | 2024-06-25 |  | 2d |  | Computer; Data Migration Specialist; Database Administrator; LucidChart S-License; Ms. Teams; SQL Developer; System Analyst | 64h | 2,000 |
| 55 | 1.3.2.3.3 | Proposal for new SQL tables to meet IPB’s needs | 1d | 2024-06-24 | 2024-06-24 |  | 3d |  | Computer; Data Migration Specialist; Database Administrator; Ms. Teams | 16h | 928 |
| 56 | 1.3.2.3.4 | Migration and integration documentation | 5d | 2024-06-24 | 2024-06-28 |  | 4d |  | Computer; Database Administrator; Database Mgmnt Software; IDE Software (Visual Studio Code); Ms. Teams; SQL Data Modeler; SQL Developer; SQL Server 2022 Standard Edition License; VSC (Git Software) | 160h | 3,980 |
| 57 | 1.3.2.3.5 | Execution of Migration and Data Integration | 4d | 2024-06-24 | 2024-06-27 |  | 5d |  | Computer; Database Administrator; IDE Software (Visual Studio Code); SQL Developer; VSC (Git Software) | 64h | 2,136 |
| 58 | 1.3.2.3.6 | Validate data migration | 1d | 2024-06-24 | 2024-06-24 |  | 3d |  | Data Migration Specialist; Database Administrator; IDE Software (Visual Studio Code); SQL Developer; System Analyst; VSC (Git Software) | 32h | 680 |
| 59 | 1.3.2.4 | Data security implementation | 5d | 2024-07-01 | 2024-07-05 | 52 | 4d |  | Computer; Data Migration Specialist; Database Administrator; SQL Developer | 120h | 3,200 |

| ID | WBS | Task | Duration | Start | Finish | Predecessors | Total slack | Resources | Work | Cost |
| --- | --- | --- | --- | --- | --- | --- | --- | --- | --- | --- |
| 60 | 1.4 | **Training and User Support Phase** | 6d | 2024-07-12 | 2024-07-19 | 24 | 0d |  | 136h | 4,685 |
| 61 | 1.4.1 | **Manual and documentation** | 3d | 2024-07-12 | 2024-07-16 |  | 0d |  | 96h | 2,805 |
| 62 | 1.4.1.1 | User manual for end users, with simple and practical specifications | 3d | 2024-07-12 | 2024-07-16 |  | 0d | GitBook Software License; Requirement Analyst; Technical Write; Computer | 48h | 1,402.5 |
| 63 | 1.4.1.2 | Detailed technical manual for future programmers, with detailed specifications for application maintenance | 3d | 2024-07-12 | 2024-07-16 |  | 0d | GitBook Software License; System Analyst; Technical Write; Computer | 48h | 1,402.5 |
| 64 | 1.4.2 | **Conducting training sessions** | 3d | 2024-07-17 | 2024-07-19 | 61 | 0d |  | 40h | 1,880 |
| 65 | 1.4.2.1 | Practical demonstration of using the application for end users | 3d | 2024-07-17 | 2024-07-19 |  | 0d | Computer; Requirement Analyst | 24h | 1,080 |
| 66 | 1.4.2.2 | Feedback report by end users | 1d | 2024-07-17 | 2024-07-17 |  | 2d | Change Management Specialist; Computer; Technical Write | 16h | 800 |
